# 项目1.0.1

How a schedule from MS Project changed from version to version. A marks actual dates.

## Version 1 (saved 2015-05-25, file 项目进度计划1.2.1.mpp)

| ID | WBS | Task | Duration | Start | Finish | Predecessors | Complete | Constraint |
| --- | --- | --- | --- | --- | --- | --- | --- | --- |
| 1 | 1 | **项目确定及介绍** | 32h | 2015-03-19 08:00 | 2015-03-24 17:00 |  | 100% |  |
| 2 |  | 开会讨论 | 1h | 2015-03-19 00:00 A | 2015-03-19 01:00 A |  | 100% |  |
| 3 |  | 调研linux文件系统 | 30.5h | 2015-03-19 00:00 A | 2015-03-20 23:30 A | 2 | 100% |  |
| 4 |  | 调研高性能计算开源软件 | 30.5h | 2015-03-19 00:00 A | 2015-03-20 23:30 A | 2 | 100% |  |
| 5 |  | 调研数据处理开源软件 | 30.5h | 2015-03-19 00:00 A | 2015-03-20 23:30 A | 2 | 100% |  |
| 6 |  | 调研CompCert编译器 | 30.5h | 2015-03-19 00:00 A | 2015-03-20 23:30 A | 2 | 100% |  |
| 7 |  | 开会确定项目 | 16h | 2015-03-21 00:00 A | 2015-03-21 17:00 A | 3, 4, 5, 6 | 100% |  |
| 8 |  | 材料准备 | 4h | 2015-03-23 00:00 A | 2015-03-23 04:00 A | 7 | 100% |  |
| 9 |  | 制作PPT，准备课题介绍 | 0.5h | 2015-03-24 00:00 A | 2015-03-24 00:30 A | 8 | 100% |  |
| 10 | 2 | **CompCert C编译器开发计划书编写** | 24h | 2015-03-25 08:00 | 2015-03-27 17:00 | 1 | 100% |  |
| 11 |  | 上课 | 3h | 2015-03-23 23:30 A | 2015-03-24 10:30 A |  | 100% |  |
| 12 |  | 开会总结问题并且讨论计划书编写 | 4h | 2015-03-25 00:00 A | 2015-03-25 04:00 A | 11 | 100% |  |
| 13 |  | 编写Project | 4h | 2015-03-25 00:00 A | 2015-03-25 04:00 A | 12 | 100% |  |
| 14 |  | 阅读用户手册 | 8h | 2015-03-25 00:00 A | 2015-03-25 08:00 A | 13 | 100% |  |
| 15 |  | 安装CompCert C编译器软件 | 4h | 2015-03-26 00:00 A | 2015-03-26 04:00 A | 13 | 100% |  |
| 16 |  | 阅读并整理CompCert C源代码 | 8h | 2015-03-27 00:00 A | 2015-03-27 08:00 A | 13 | 100% |  |
| 17 |  | 编写CompCert C开发计划书 | 4h | 2015-03-28 00:00 A | 2015-03-28 04:00 A | 14, 15, 16 | 100% |  |
| 18 | 3 | **软件需求分析** | 56h | 2015-03-29 08:00 | 2015-04-05 17:00 | 10, 1 | 100% |  |
| 19 |  | 更新任务计划书 | 6h | 2015-03-30 00:00 A | 2015-03-30 06:00 A |  | 100% | start no earlier than 2015-03-30 08:00 |
| 20 |  | 开会讨论需求 | 6h | 2015-03-31 00:00 A | 2015-03-31 06:00 A | 19 | 100% |  |
| 21 |  | 制作RUCM | 6h | 2015-03-31 00:00 A | 2015-03-31 06:00 A | 20 | 100% |  |
| 22 |  | 编写软件需求规格说明书 | 10h | 2015-04-01 00:00 A | 2015-04-01 10:00 A | 20 | 100% |  |
| 23 |  | 上课 | 3h | 2015-04-01 00:00 A | 2015-04-01 03:00 A |  | 100% |  |
| 24 |  | 开会分析出现的问题 | 2h | 2015-04-02 00:00 A | 2015-04-02 02:00 A | 23 | 100% |  |
| 25 |  | 更改RUCM | 8h | 2015-04-03 00:00 A | 2015-04-03 08:00 A | 24 | 100% |  |
| 26 |  | 制作检查单 | 4h | 2015-04-04 00:00 A | 2015-04-04 04:00 A |  | 100% |  |
| 27 | 4 | **软件需求评审** | 16h | 2015-04-06 08:00 | 2015-04-07 17:00 | 18 | 100% |  |
| 28 |  | 对各组进行评审 | 2h | 2015-04-06 00:00 A | 2015-04-06 02:00 A |  | 100% |  |
| 29 |  | 收集本小组出现的问题 | 1h | 2015-04-07 00:00 A | 2015-04-07 01:00 A |  | 100% |  |
| 30 | 5 | **软件需求复评审** | 56h | 2015-04-08 08:00 | 2015-04-16 17:00 | 27 | 100% |  |
| 31 |  | 上课 | 3h | 2015-04-08 00:00 A | 2015-04-08 03:00 A |  | 100% |  |
| 32 |  | 整理课堂问题 | 2h | 2015-04-09 00:00 A | 2015-04-09 02:00 A | 31 | 100% |  |
| 33 |  | 修改RUCM | 3h | 2015-04-11 00:00 A | 2015-04-11 03:00 A | 32 | 100% |  |
| 34 |  | 修改软件需求规格说明书 | 2h | 2015-04-11 00:00 A | 2015-04-11 02:00 A | 32 | 100% |  |
| 35 |  | 进行软件项目的评审 | 12h | 2015-04-11 00:00 A | 2015-04-11 12:00 A | 33, 34 | 100% |  |
| 36 |  | 进行项目总结 | 4h | 2015-04-14 00:00 A | 2015-04-14 04:00 A | 35 | 100% |  |
| 37 | 6 | **进度计划实验** | 48h | 2015-04-15 08:00 | 2015-04-22 17:00 |  | 100% |  |
| 38 |  | 开会讨论 | 2h | 2015-04-16 00:00 A | 2015-04-16 02:00 A |  | 100% |  |
| 39 |  | 制定本周计划 | 1h | 2015-04-16 00:00 A | 2015-04-16 01:00 A | 38 | 100% |  |
| 40 |  | 整理问题清单 | 2h | 2015-04-17 00:00 A | 2015-04-17 02:00 A | 38 | 100% |  |
| 41 |  | 修改需求规格说明书与RUCM | 4h | 2015-04-18 00:00 A | 2015-04-18 04:00 A | 38 | 100% |  |
| 42 |  | 统计以往时间，修改进度计划 | 2h | 2015-04-18 00:00 A | 2015-04-18 02:00 A |  | 100% |  |
| 43 |  | 增加数据字典 | 1h | 2015-04-20 00:00 A | 2015-04-20 01:00 A |  | 100% |  |
| 44 |  | 完成项目进度评审 | 1h | 2015-04-21 00:00 A | 2015-04-21 01:00 A |  | 100% |  |
| 45 | 7 | **软件测试** | 56h | 2015-04-23 08:00 | 2015-05-01 17:00 |  | 100% |  |
| 46 |  | 开会讨论测试任务 | 2h | 2015-04-24 00:00 A | 2015-04-24 02:00 A |  | 100% |  |
| 47 |  | 设计测试用例 | 2h | 2015-04-26 00:00 A | 2015-04-26 02:00 A | 46 | 100% |  |
| 48 |  | 编写测试需求规格说明书 | 2h | 2015-04-26 00:00 A | 2015-04-26 02:00 A | 47 | 100% |  |
| 49 |  | 编写实验六、七、八方案 | 2h | 2015-04-28 00:00 A | 2015-04-28 02:00 A |  | 100% |  |
| 50 | 8 | **软件测试评审** | 56h | 2015-04-29 08:00 | 2015-05-07 17:00 | 45 | 50% |  |
| 51 |  | 上课第8周课 | 3h | 2015-04-29 00:00 A | 2015-04-29 03:00 A |  | 100% |  |
| 52 |  | 开会讨论测试需求规格的更改 | 2h | 2015-05-01 00:00 A | 2015-05-01 02:00 A |  | 100% |  |
| 53 |  | 实验方案网上评审 | 4h | 2015-05-02 00:00 | 2015-05-02 04:00 |  |  |  |
| 54 |  | 修订软件测试需求规格说明书 | 3h | 2015-05-02 00:00 A | 2015-05-02 03:00 A |  | 100% |  |
| 55 |  | 进行软件测试规格说明书的网上评审 | 4h | 2015-05-03 00:00 | 2015-05-03 04:00 |  |  |  |
| 56 | 9 | **软件测试复评审** | 56h | 2015-05-06 08:00 | 2015-05-14 17:00 | 50 | 80% |  |
| 57 |  | 上第9周课 | 3h | 2015-05-06 00:00 A | 2015-05-06 03:00 A |  | 100% |  |
| 58 |  | 开会讨论测试需求规格说明书 | 2h | 2015-05-08 00:00 A | 2015-05-08 02:00 A | 57 | 100% |  |
| 59 |  | 整理github资料 | 4h | 2015-05-12 00:00 A | 2015-05-12 04:00 A |  | 100% |  |
| 60 |  | 第10周课程 | 3h | 2015-05-13 00:00 | 2015-05-13 03:00 |  |  |  |
| 61 |  | 追踪mpp | 3h | 2015-05-13 00:00 A | 2015-05-13 03:00 A |  | 100% |  |
| 62 | 10 | **软件测试需求完善** | 56h | 2015-05-14 00:00 A | 2015-05-21 17:00 |  | 100% |  |
| 63 |  | 开会讨论这周任务 | 2h | 2015-05-14 00:00 A | 2015-05-14 02:00 A |  | 100% |  |
| 64 |  | 完善测试需求规格说明书 | 4h | 2015-05-14 00:00 A | 2015-05-14 04:00 A |  | 100% |  |
| 65 |  | github资料评审 | 20h | 2015-05-15 00:00 A | 2015-05-17 12:00 A |  | 100% |  |
| 66 | 11 | **CompCert C用例测试** | 32h | 2015-05-17 00:00 | 2015-05-19 17:00 |  | 100% |  |
| 67 |  | 10周-测试会议 | 2h | 2015-05-18 00:00 A | 2015-05-18 02:00 A |  | 100% |  |
| 68 |  | 完善测试用例 | 4h | 2015-05-18 00:00 A | 2015-05-18 04:00 A |  | 100% |  |
| 69 |  | 测试CompCert C测试用例 | 8h | 2015-05-19 00:00 A | 2015-05-19 08:00 A |  | 100% |  |
| 70 |  | 测试报告编写 | 4h | 2015-05-19 00:00 A | 2015-05-19 04:00 A |  | 100% |  |

| ID | WBS | Task | Duration | Start | Finish | Predecessors | Complete |
| --- | --- | --- | --- | --- | --- | --- | --- |
| 71 | 12 | **软件产品更新与展示** | 56h | 2015-05-20 00:00 | 2015-05-27 17:00 | 1, 10, 18, 27 | 100% |
| 72 |  | 第11周会议 | 2h | 2015-05-22 00:00 A | 2015-05-22 02:00 A |  | 100% |
| 73 |  | 完善mpp | 2h | 2015-05-25 00:00 A | 2015-05-25 02:00 A |  | 100% |
| 74 |  | 完善实验6-8的输出文件 | 4h | 2015-05-25 00:00 A | 2015-05-25 04:00 A |  | 100% |
| 75 |  | 上11周课 | 3h | 2015-05-27 00:00 A | 2015-05-27 03:00 A |  | 100% |
| 76 | 13 | **综合实验分析** | 54.5h | 2015-05-28 00:00 | 2015-06-03 23:30 |  |  |
| 77 |  | 12周会议 | 2h | 2015-05-29 00:00 | 2015-05-29 02:00 |  |  |
| 78 |  | 完善所有文档 | 30.5h | 2015-05-30 00:00 | 2015-06-01 23:30 |  |  |
| 79 |  | 进行实验初步分析 | 4h | 2015-06-02 00:00 | 2015-06-02 04:00 |  |  |
| 80 |  | 上12周课程 | 3h | 2015-06-03 00:00 | 2015-06-03 03:00 |  |  |
| 81 | 14 | **综合实验总结** | 54.5h | 2015-06-03 08:00 | 2015-06-10 23:30 | 76 |  |
| 82 |  | 第13周会议 | 2h | 2015-06-05 00:00 | 2015-06-05 02:00 |  |  |
| 83 |  | 上13周课程 | 3h | 2015-06-10 00:00 | 2015-06-10 03:00 |  |  |

## Version 2 (saved 2015-06-08, file 项目进度计划1.3.mpp)

Last finish 2015-06-10 → 2015-06-11 (+1d). Complete tasks 60 → 71.

Added:

| ID | Task | Duration | Start | Finish | Resources |
| --- | --- | --- | --- | --- | --- |
| 83 | 提取相关数据 | 4h | 2015-06-05 00:00 A | 2015-06-05 04:00 A | 王斐; 李涵 |
| 84 | 问题整理与提取 | 3h | 2015-06-05 00:00 A | 2015-06-05 03:00 A | 张晋卿; 张振 |
| 85 | 编写数据分析报告 | 4h | 2015-06-08 00:00 A | 2015-06-08 04:00 A | 李涵; 王斐 |
| 86 | 编写实验方法总结报告 | 4h | 2015-06-08 00:00 A | 2015-06-08 04:00 A | 张晋卿; 张振 |
| 87 | 编写个人实验总结 | 2h | 2015-06-08 00:00 A | 2015-06-08 02:00 A | 王斐; 李涵; 张晋卿; 张振 |
| 89 | 实验材料修订 | 4h | 2015-06-10 00:00 | 2015-06-10 04:00 | 李涵; 王斐; 张晋卿; 张振 |

Changed:

| ID | Task | Start | Finish | Duration | Complete | Other |
| --- | --- | --- | --- | --- | --- | --- |
| 76 | **综合实验分析** |  | 2015-06-03 23:30 → 2015-06-04 17:00 (+1d) | 54.5h → 56h | 0% → 100% |  |
| 77 | 12周会议 | 2015-05-29 00:00 A | 2015-05-29 02:00 A |  | 0% → 100% |  |
| 78 | 完善所有文档 | 2015-05-30 00:00 A | 2015-06-01 23:30 → 2015-05-30 12:00 A (-2d) | 30.5h → 12h | 0% → 100% |  |
| 79 | 进行实验初步分析 | 2015-06-02 00:00 A | 2015-06-02 04:00 A |  | 0% → 100% |  |
| 80 | 上12周课程 | 2015-06-03 00:00 A | 2015-06-03 03:00 A |  | 0% → 100% |  |
| 81 | **综合实验总结** |  | 2015-06-10 23:30 → 2015-06-11 17:00 (+1d) | 54.5h → 56h | 0% → 100% |  |
| 82 | 第13周会议 | 2015-06-05 00:00 A | 2015-06-05 02:00 A |  | 0% → 100% |  |
| 88 | 上13周课程 | 2015-06-10 00:00 A | 2015-06-10 03:00 A |  | 0% → 100% | resources none → 李涵; 王斐; 张晋卿; 张振 |
